# Marketing Campaign Planning

Schedule from MS Project, 2021-02-24 to 2021-12-07.
Successful campaigns tend to be carefully researched, well thought out, and focused on details and execution. Planning a marketing campaign begins with understanding your position in the marketplace and ends with collecting data and analyzing campaign effectiveness. This template outlines the various considerations you might need to plan a marketing campaign in your organization.

## Calendars

- Standard: Mon-Fri 08:00-12:00, 13:00-17:00; Sat-Sun off.

## Resources

| Resource |
| --- |
| Logistics Lead |
| Marketing Lead |
| Sponsor |
| Sales |
| Creative |
| Content Consultant |
| Marketing |
| Marketing Research |
| Corporate Sponsor |
| Subject Matter Expert |
| Inside Sales |
| Marketing Staff |
| Product Marketing |
| Regional General Manager |
| Country Manager |
| Strategic Alliance Lead |
| Marketing Rep |
| Marketing Research |
| Internal PR |
| PR Company |
| Vendor |

## Schedule

| ID | WBS | Task | Type | Duration | Start | Finish | Predecessors | Total slack | Free slack | Resources | Work |
| --- | --- | --- | --- | --- | --- | --- | --- | --- | --- | --- | --- |
| 1 | 1 | **Review Business Strategy Landscape** |  | 27d | 2021-02-24 | 2021-04-01 |  | 0d |  |  | 256h |
| 2 | 1.1 | Identify service/product gaps and opportunities |  | 5d | 2021-02-24 | 2021-03-02 |  | 0d |  | Marketing Lead | 40h |
| 3 | 1.2 | Complete SWOT analysis |  | 5d | 2021-03-03 | 2021-03-09 | 2 | 0d |  | Marketing Lead | 40h |
| 4 | 1.3 | Review business model |  | 1d | 2021-03-10 | 2021-03-10 | 3 | 0d |  | Marketing Lead | 8h |
| 5 | 1.4 | Review organizational marketing strategy |  | 3d | 2021-03-11 | 2021-03-15 | 4 | 0d |  | Marketing Lead | 24h |
| 6 | 1.5 | Review local marketing strategy |  | 1d | 2021-03-16 | 2021-03-16 | 5 | 0d |  | Marketing Lead | 8h |
| 7 | 1.6 | Review global marketing strategy |  | 1d | 2021-03-17 | 2021-03-17 | 6 | 0d |  | Marketing Rep | 8h |
| 8 | 1.7 | Review marketing plan for campaign budget |  | 1d | 2021-03-18 | 2021-03-18 | 7 | 0d |  | Marketing Rep | 8h |
| 9 | 1.8 | Establish go-to-markets for organization |  | 1d | 2021-03-19 | 2021-03-19 | 8 | 0d |  | Marketing Lead | 8h |
| 10 | 1.9 | Evaluate alignment to corporate strategy goals |  | 2d | 2021-03-22 | 2021-03-23 | 9 | 0d |  | Marketing Lead; Sponsor | 32h |
| 11 | 1.10 | Evaluate competitive advantages |  | 3d | 2021-03-24 | 2021-03-26 | 10 | 0d |  | Marketing Lead; Marketing Research | 48h |
| 12 | 1.11 | Review product and service margins |  | 3d | 2021-03-29 | 2021-03-31 | 11 | 0d |  | Marketing Lead | 24h |
| 13 | 1.12 | Review previous campaign performance |  | 1d | 2021-04-01 | 2021-04-01 | 12 | 0d |  | Marketing Lead | 8h |
| 14 | 1.13 | Business Strategy Landscape Review Complete | milestone | 0d | 2021-04-01 | 2021-04-01 | 13 | 0d |  |  |  |
| 15 | 2 | **Develop Campaign Concepts** |  | 49d | 2021-04-02 | 2021-06-09 |  | 0d |  |  | 504h |
| 16 | 2.1 | Create process for qualifying ideas |  | 5d | 2021-04-02 | 2021-04-08 | 14 | 0d |  | Marketing Staff | 40h |
| 17 | 2.2 | Establish process for idea sharing |  | 5d | 2021-04-09 | 2021-04-15 | 16 | 0d |  | Marketing Staff | 40h |
| 18 | 2.3 | Gather ideas |  | 1d | 2021-04-16 | 2021-04-16 | 17 | 0d |  |  |  |
| 19 | 2.4 | Final shaping and development of ideas |  | 5d | 2021-04-19 | 2021-04-23 | 18 | 0d |  | Marketing Lead | 40h |
| 20 | 2.5 | Research market environment |  | 5d | 2021-04-26 | 2021-04-30 | 19 | 0d |  | Marketing Research | 40h |
| 21 | 2.6 | Develop preliminary campaign concepts |  | 5d | 2021-05-03 | 2021-05-07 | 20 | 0d |  | Marketing Lead | 40h |
| 22 | 2.7 | Identify campaign targets |  | 2d | 2021-05-10 | 2021-05-11 | 21 | 0d |  | Marketing Lead | 16h |
| 23 | 2.8 | Develop campaign success metrics |  | 2d | 2021-05-12 | 2021-05-13 | 22 | 0d |  | Marketing Rep | 16h |
| 24 | 2.9 | Develop campaign tracking and analysis process |  | 3d | 2021-05-14 | 2021-05-18 | 23 | 0d |  | Marketing Staff | 24h |
| 25 | 2.10 | Validate concepts through test groups and market research |  | 5d | 2021-05-19 | 2021-05-25 | 24 | 0d |  | Marketing Rep | 40h |
| 26 | 2.11 | Establish campaign focus list |  | 1d | 2021-05-26 | 2021-05-26 | 25 | 0d |  | Marketing Rep | 8h |
| 27 | 2.12 | Establish campaign categories |  | 1d | 2021-05-27 | 2021-05-27 | 26 | 5d | 0d | Marketing Rep | 8h |
| 28 | 2.13 | Develop public relations strategy |  | 3d | 2021-05-28 | 2021-06-01 | 27 | 5d | 0d | Internal PR | 24h |
| 29 | 2.14 | Establish preliminary ideal campaign timing for promotion |  | 1d | 2021-06-02 | 2021-06-02 | 28 | 5d |  | Marketing Rep | 8h |
| 30 | 2.15 | Determine organization regional campaigns |  | 5d | 2021-05-27 | 2021-06-02 | 26 | 0d |  | Marketing Lead | 40h |
| 31 | 2.16 | Determine organization global campaigns |  | 5d | 2021-05-27 | 2021-06-02 | 26 | 0d |  | Marketing Lead | 40h |
| 32 | 2.17 | Determine organization country campaigns |  | 5d | 2021-05-27 | 2021-06-02 | 26 | 0d |  | Marketing Lead | 40h |
| 33 | 2.18 | Identify localization requirements |  | 5d | 2021-06-03 | 2021-06-09 | 30, 31, 32 | 0d |  | Marketing Staff | 40h |
| 34 | 2.19 | Campaign Concepts Complete | milestone | 0d | 2021-06-09 | 2021-06-09 | 33, 29 | 0d |  |  |  |

Notes:
- 3: SWOT - strengths, weaknesses, opportunities, threats

| ID | WBS | Task | Type | Duration | Start | Finish | Predecessors | Total slack | Free slack | Resources | Work |
| --- | --- | --- | --- | --- | --- | --- | --- | --- | --- | --- | --- |
| 35 | 3 | **Create Localization Strategy** |  | 18d | 2021-06-10 | 2021-07-05 |  | 0d |  |  | 224h |
| 36 | 3.1 | Review corporate sales objectives |  | 1d | 2021-06-10 | 2021-06-10 | 34 | 0d |  | Marketing Staff | 8h |
| 37 | 3.2 | Review regional business models |  | 1d | 2021-06-10 | 2021-06-10 | 34 | 0d |  | Marketing Rep | 8h |
| 38 | 3.3 | Review global/country business models |  | 1d | 2021-06-10 | 2021-06-10 | 34 | 0d |  | Marketing Rep | 8h |
| 39 | 3.4 | Review marketing objectives |  | 1d | 2021-06-10 | 2021-06-10 | 34 | 0d |  | Marketing Rep | 8h |
| 40 | 3.5 | Review marketing plan |  | 1d | 2021-06-10 | 2021-06-10 | 34 | 0d |  | Marketing Rep | 8h |
| 41 | 3.6 | Establish campaign opportunities |  | 3d | 2021-06-11 | 2021-06-15 | 36, 37, 38, 39, 40 | 0d |  | Marketing Rep | 24h |
| 42 | 3.7 | Review services and product mix and forecast |  | 3d | 2021-06-16 | 2021-06-18 | 41 | 0d |  | Marketing Rep | 24h |
| 43 | 3.8 | Review product release cycles |  | 3d | 2021-06-21 | 2021-06-23 | 42 | 6d |  | Marketing Rep | 24h |
| 44 | 3.9 | Determine campaign mix for each region |  | 3d | 2021-06-21 | 2021-06-23 | 42 | 0d |  | Marketing Lead | 24h |
| 45 | 3.10 | Determine campaign success measures for each region |  | 3d | 2021-06-24 | 2021-06-28 | 44 | 0d |  | Marketing Lead; Regional General Manager | 48h |
| 46 | 3.11 | Determine tracking mechanism |  | 3d | 2021-06-29 | 2021-07-01 | 45 | 0d |  | Marketing Staff | 24h |
| 47 | 3.12 | Create localization strategy |  | 2d | 2021-07-02 | 2021-07-05 | 46, 44, 43 | 0d |  | Marketing Staff | 16h |
| 48 | 3.13 | Localization Strategy Complete | milestone | 0d | 2021-07-05 | 2021-07-05 | 47 | 0d |  |  |  |
| 49 | 4 | **Communicate and Train Internal Organization** |  | 24d | 2021-07-06 | 2021-08-06 |  | 0d |  |  | 240h |
| 50 | 4.1 | Establish corporate internal communications process |  | 3d | 2021-07-06 | 2021-07-08 | 48 | 0d |  | Marketing Staff | 24h |
| 51 | 4.2 | Determine regional and country division communications process |  | 5d | 2021-07-09 | 2021-07-15 | 50 | 0d |  | Marketing Staff | 40h |
| 52 | 4.3 | Plan communications methods, logistics, and timing |  | 4d | 2021-07-16 | 2021-07-21 | 51 | 0d |  | Marketing Staff; Logistics Lead | 64h |
| 53 | 4.4 | Regional and country communications to sales, marketing, and management |  | 5d | 2021-07-22 | 2021-07-28 | 52 | 0d |  | Marketing Rep | 40h |
| 54 | 4.5 | Determine internal systems to respond to campaign |  | 5d | 2021-07-29 | 2021-08-04 | 53 | 0d |  | Marketing Staff | 40h |
| 55 | 4.6 | Create communications plan |  | 2d | 2021-08-05 | 2021-08-06 | 54 | 0d |  |  |  |
| 56 | 4.7 | Identify internal training requirements |  | 1d | 2021-07-06 | 2021-07-06 | 48 | 20d | 0d | Marketing Staff | 8h |
| 57 | 4.8 | Develop internal training |  | 3d | 2021-07-07 | 2021-07-09 | 56 | 20d |  | Marketing Staff | 24h |
| 58 | 4.9 | Organization Internal Communications and Training Complete | milestone | 0d | 2021-08-06 | 2021-08-06 | 55, 57 | 0d |  |  |  |

| ID | WBS | Task | Type | Duration | Start | Finish | Predecessors | Total slack | Free slack | Resources | Work |
| --- | --- | --- | --- | --- | --- | --- | --- | --- | --- | --- | --- |
| 59 | 5 | **Customer Relationship Management** |  | 16d | 2021-07-06 | 2021-07-27 |  | 8d |  |  | 152h |
| 60 | 5.1 | Review customer data and feedback |  | 3d | 2021-07-06 | 2021-07-08 | 48 | 8d | 0d | Marketing Staff | 24h |
| 61 | 5.2 | Review company segments and channels |  | 3d | 2021-07-06 | 2021-07-08 | 48 | 8d | 0d | Marketing Staff | 24h |
| 62 | 5.3 | Identify targets for each campaign |  | 3d | 2021-07-09 | 2021-07-13 | 60, 61 | 8d | 0d | Marketing Research | 24h |
| 63 | 5.4 | Segment data for each campaign |  | 5d | 2021-07-14 | 2021-07-20 | 62 | 8d | 0d | Marketing Staff | 40h |
| 64 | 5.5 | Prepare/procure lists for each campaign |  | 5d | 2021-07-21 | 2021-07-27 | 63 | 8d | 0d | Marketing Staff | 40h |
| 65 | 5.6 | Customer Relationship Management Complete | milestone | 0d | 2021-07-27 | 2021-07-27 | 64 | 8d |  |  |  |
| 66 | 6 | **Analyze Regional/Global/Country Business Models** |  | 9d | 2021-07-06 | 2021-07-16 |  | 15d |  |  | 88h |
| 67 | 6.1 | Establish target regions |  | 1d | 2021-07-06 | 2021-07-06 | 48 | 15d | 0d | Marketing Staff | 8h |
| 68 | 6.2 | Determine local gaps |  | 2d | 2021-07-07 | 2021-07-08 | 67 | 15d | 0d | Marketing Staff | 16h |
| 69 | 6.3 | Review local competition |  | 3d | 2021-07-09 | 2021-07-13 | 68 | 15d | 0d | Marketing Research | 24h |
| 70 | 6.4 | Develop competitive advantage |  | 2d | 2021-07-14 | 2021-07-15 | 69 | 15d | 0d | Marketing Research; Marketing Lead | 32h |
| 71 | 6.5 | Identify go-to partners |  | 1d | 2021-07-16 | 2021-07-16 | 70 | 15d | 0d | Strategic Alliance Lead | 8h |
| 72 | 6.6 | Regional/Global/Country Business Models Complete | milestone | 0d | 2021-07-16 | 2021-07-16 | 71 | 15d |  |  |  |
| 73 | 7 | **Develop Campaign** |  | 14d | 2021-08-09 | 2021-08-26 |  | 0d |  |  | 104h |
| 74 | 7.1 | Review campaign concepts |  | 2d | 2021-08-09 | 2021-08-10 | 58, 65, 72 | 0d |  | Marketing Lead | 16h |
| 75 | 7.2 | Create campaign list |  | 1d | 2021-08-11 | 2021-08-11 | 74 | 0d |  | Marketing Rep | 8h |
| 76 | 7.3 | Identify campaign leads |  | 1d | 2021-08-12 | 2021-08-12 | 75 | 0d |  | Marketing Rep | 8h |
| 77 | 7.4 | Develop Individual campaigns |  | 1d | 2021-08-13 | 2021-08-13 | 76 | 0d |  |  |  |
| 78 | 7.5 | Develop campaign schedules |  | 2d | 2021-08-16 | 2021-08-17 | 77 | 0d |  | Marketing Rep | 16h |
| 79 | 7.6 | Determine calls to action |  | 2d | 2021-08-18 | 2021-08-19 | 78 | 0d |  | Marketing Lead | 16h |
| 80 | 7.7 | Determine advertising/promotion methods and mix |  | 5d | 2021-08-20 | 2021-08-26 | 79 | 0d |  | Marketing Lead | 40h |
| 81 | 7.8 | Campaign Development Complete | milestone | 0d | 2021-08-26 | 2021-08-26 | 80 | 0d |  |  |  |
| 82 | 8 | **Develop Campaign Creative and Testing** |  | 30d | 2021-08-27 | 2021-10-07 |  | 0d |  |  | 312h |
| 83 | 8.1 | Select vendor for creative |  | 1d | 2021-08-27 | 2021-08-27 | 81 | 0d |  | Marketing Rep; Marketing Lead | 16h |
| 84 | 8.2 | Determine campaign voice/messaging style |  | 3d | 2021-08-30 | 2021-09-01 | 83 | 0d |  | Creative; Marketing Lead | 48h |
| 85 | 8.3 | Develop concepts and comps |  | 5d | 2021-09-02 | 2021-09-08 | 84 | 0d |  | Creative | 40h |
| 86 | 8.4 | Select creative for campaign |  | 5d | 2021-09-09 | 2021-09-15 | 85 | 0d |  | Marketing Lead; Corporate Sponsor | 80h |
| 87 | 8.5 | Prepare pretest materials |  | 5d | 2021-09-16 | 2021-09-22 | 86 | 0d |  | Marketing Rep | 40h |
| 88 | 8.6 | Pretest campaign |  | 5d | 2021-09-23 | 2021-09-29 | 87 | 0d |  | Marketing Rep | 40h |
| 89 | 8.7 | Determine if pretest creative achieves objectives |  | 1d | 2021-09-30 | 2021-09-30 | 88 | 0d |  | Marketing Rep | 8h |
| 90 | 8.8 | Improve creative based on pretest results |  | 5d | 2021-10-01 | 2021-10-07 | 89 | 0d |  | Creative | 40h |
| 91 | 8.9 | Campaign Creative and Testing Complete | milestone | 0d | 2021-10-07 | 2021-10-07 | 90 | 0d |  |  |  |

| ID | WBS | Task | Type | Duration | Start | Finish | Predecessors | Total slack | Free slack | Resources | Work |
| --- | --- | --- | --- | --- | --- | --- | --- | --- | --- | --- | --- |
| 92 | 9 | **Develop Strategy for External Promotions** |  | 9d | 2021-10-08 | 2021-10-20 |  | 0d |  |  | 368h |
| 93 | 9.1 | Develop promotion strategy |  | 2d | 2021-10-08 | 2021-10-11 | 91 | 0d |  | Marketing Lead; Internal PR | 32h |
| 94 | 9.2 | Develop press releases |  | 4d | 2021-10-12 | 2021-10-15 | 93 | 0d |  | Internal PR; PR Company | 64h |
| 95 | 9.3 | Develop announcements |  | 4d | 2021-10-12 | 2021-10-15 | 93 | 0d |  | Internal PR; PR Company | 64h |
| 96 | 9.4 | Provide pre-release information to analysts |  | 3d | 2021-10-18 | 2021-10-20 | 94, 95 | 0d |  | Internal PR; PR Company | 48h |
| 97 | 9.5 | Generate 'buzz' |  | 5d | 2021-10-12 | 2021-10-18 | 93 | 2d |  | Internal PR; PR Company | 80h |
| 98 | 9.6 | Execute publicity strategy |  | 5d | 2021-10-08 | 2021-10-14 | 91 | 4d |  | Internal PR; PR Company | 80h |
| 99 | 9.7 | Promotion - External Complete | milestone | 0d | 2021-10-20 | 2021-10-20 | 98, 96, 97 | 0d |  |  |  |
| 100 | 10 | **Production** |  | 14d | 2021-10-21 | 2021-11-09 |  | 0d |  |  | 112h |
| 101 | 10.1 | Submit campaign material for broadcast publications |  | 3d | 2021-10-21 | 2021-10-25 | 99 | 0d |  | Marketing Rep | 24h |
| 102 | 10.2 | Select vendor for appropriate production methods |  | 1d | 2021-10-26 | 2021-10-26 | 101 | 20d | 0d | Marketing Staff | 8h |
| 103 | 10.3 | Production of materials |  | 5d | 2021-10-27 | 2021-11-02 | 102 | 20d | 0d | Vendor | 40h |
| 104 | 10.4 | Dissemination of materials |  | 5d | 2021-11-03 | 2021-11-09 | 103 | 20d | 0d | Vendor | 40h |
| 105 | 10.5 | Production Complete | milestone | 0d | 2021-11-09 | 2021-11-09 | 104 | 20d |  |  |  |
| 106 | 11 | **Campaign Release** |  | 13d | 2021-10-26 | 2021-11-11 |  | 0d |  |  | 144h |
| 107 | 11.1 | Develop campaign release schedules |  | 2d | 2021-10-26 | 2021-10-27 | 101 | 0d |  | Marketing Rep | 16h |
| 108 | 11.2 | Determine release teams |  | 1d | 2021-10-28 | 2021-10-28 | 107 | 0d |  | Marketing Lead | 8h |
| 109 | 11.3 | Perform Inside sales calls |  | 5d | 2021-10-29 | 2021-11-04 | 108 | 0d |  | Marketing Lead; Inside Sales | 80h |
| 110 | 11.4 | Execute campaign |  | 5d | 2021-11-05 | 2021-11-11 | 109 | 0d |  | Marketing Lead | 40h |
| 111 | 11.5 | Campaign Release Complete | milestone | 0d | 2021-11-11 | 2021-11-11 | 110 | 0d |  |  |  |
| 112 | 12 | **Campaign Effectiveness** |  | 18d | 2021-11-12 | 2021-12-07 |  | 0d |  |  | 192h |
| 113 | 12.1 | Evaluate campaign effectiveness |  | 3d | 2021-11-12 | 2021-11-16 | 111 | 3d |  | Marketing Lead | 24h |
| 114 | 12.2 | Review regional sales |  | 1d | 2021-11-12 | 2021-11-12 | 111 | 0d |  | Marketing Lead; Sales | 16h |
| 115 | 12.3 | Review global sales |  | 1d | 2021-11-15 | 2021-11-15 | 114 | 0d |  | Marketing Lead; Sales | 16h |
| 116 | 12.4 | Review customer data and feedback |  | 1d | 2021-11-16 | 2021-11-16 | 115 | 0d |  | Marketing Rep; Marketing Staff | 16h |
| 117 | 12.5 | Perform market analysis |  | 3d | 2021-11-17 | 2021-11-19 | 116 | 0d |  | Marketing Research | 24h |
| 118 | 12.6 | Review success measures |  | 3d | 2021-11-22 | 2021-11-24 | 113, 114, 115, 116, 117 | 0d |  | Marketing Lead | 24h |
| 119 | 12.7 | Measure campaign effectiveness |  | 3d | 2021-11-25 | 2021-11-29 | 118 | 0d |  | Marketing Lead | 24h |
| 120 | 12.8 | Identify any gaps |  | 1d | 2021-11-30 | 2021-11-30 | 119 | 0d |  | Marketing Lead | 8h |
| 121 | 12.9 | Develop future campaign ideas |  | 5d | 2021-12-01 | 2021-12-07 | 120 | 0d |  | Marketing Lead | 40h |
| 122 | 12.10 | Campaign Effectiveness | milestone | 0d | 2021-12-07 | 2021-12-07 | 121 | 0d |  |  |  |
| 123 | 13 | Marketing Campaign Planning Complete | milestone | 0d | 2021-12-07 | 2021-12-07 | 122 | 0d |  |  |  |

Notes:
- 92: You may have a more detailed PR schedule to manage the work for this section of the campaign execution.
