# Evaluate Strategic Merger or Acquisition (M&A)

Schedule from MS Project, 2021-02-24 to 2021-05-28.
This template addresses, from a Strategic Business Development perspective, the general activities that a company goes through to determine its business growth strategy. The roadmap includes understanding market position, evaluating trade-offs between mergers/acquisitions and internal development, evaluating M&A candidates, and placing valuation on target companies.

## Calendars

- Standard: Mon-Fri 08:00-12:00, 13:00-17:00; Sat-Sun off.

## Resources

| Resource | Notes |
| --- | --- |
| Key Executive Committee |  |
| Investment Banker |  |
| Merger & Acquisition Team | The Merger and Acquisition Team will be include representation for / Legal, Financial, Human Impact, Marketing, Risk Management and Industry Specific Experts |

## Schedule

| ID | WBS | Task | Type | Duration | Start | Finish | Predecessors | Total slack | Free slack | Resources | Work |
| --- | --- | --- | --- | --- | --- | --- | --- | --- | --- | --- | --- |
| 1 | 1 | **Develop Mergers & Acquisition Strategy** |  | 10d? | 2021-02-24 | 2021-03-09 |  | 0d |  |  | 120h |
| 2 | 1.1 | **Identify Current Capabilities and Positioning** |  | 3d? | 2021-02-24 | 2021-02-26 |  | 0d |  |  | 24h |
| 3 | 1.1.1 | Perform Competitive Analysis |  | 1d? | 2021-02-24 | 2021-02-24 |  | 0d |  | Key Executive Committee | 8h |
| 4 | 1.1.2 | Perform Market Trend Analysis |  | 1d? | 2021-02-25 | 2021-02-25 | 3 | 0d |  | Key Executive Committee | 8h |
| 5 | 1.1.3 | Define Current Positioning and Gaps |  | 1d? | 2021-02-26 | 2021-02-26 | 4 | 0d |  | Key Executive Committee | 8h |
| 6 | 1.1.4 | Current Position Analysis Complete | milestone | 0d | 2021-02-26 | 2021-02-26 | 5 | 0d |  |  |  |
| 7 | 1.2 | **Define Merger/Acquisition Goals** |  | 4d? | 2021-03-01 | 2021-03-04 |  | 0d |  |  | 32h |
| 8 | 1.2.1 | Define Strategic Objectives For M&A |  | 1d? | 2021-03-01 | 2021-03-01 | 6 | 0d |  | Key Executive Committee | 8h |
| 9 | 1.2.2 | **Define Risk Tolerance for M&A** |  | 3d? | 2021-03-02 | 2021-03-04 |  | 9d |  |  | 24h |
| 10 | 1.2.2.1 | Define Financial Risk Tolerance |  | 1d? | 2021-03-02 | 2021-03-02 | 8 | 9d | 0d | Key Executive Committee | 8h |
| 11 | 1.2.2.2 | Define Market Position Risk Tolerance |  | 1d? | 2021-03-03 | 2021-03-03 | 10 | 9d | 0d | Key Executive Committee | 8h |
| 12 | 1.2.2.3 | Define Capabilities Risk Tolerance |  | 1d? | 2021-03-04 | 2021-03-04 | 11 | 9d | 0d | Key Executive Committee | 8h |
| 13 | 1.2.2.4 | Complete Risk Tolerance Assessment | milestone | 0d | 2021-03-04 | 2021-03-04 | 12 | 9d | 0d | Key Executive Committee |  |
| 14 | 1.3 | **Define Internal Versus M&A Evaluation Criteria** |  | 3d? | 2021-03-05 | 2021-03-09 |  | 9d |  |  | 24h |
| 15 | 1.3.1 | Define Internal Development Capabilities Model |  | 1d? | 2021-03-05 | 2021-03-05 | 13 | 9d | 0d | Key Executive Committee | 8h |
| 16 | 1.3.2 | Define Internal Versus M&A Comparison Model |  | 1d? | 2021-03-08 | 2021-03-08 | 15 | 9d | 0d | Key Executive Committee | 8h |
| 17 | 1.3.3 | Define Selection Scenario and Target Performance Measures |  | 1d? | 2021-03-09 | 2021-03-09 | 16 | 9d | 0d | Key Executive Committee | 8h |
| 18 | 1.3.4 | Internal Versus M&A Evaluation Criteria Complete | milestone | 0d | 2021-03-09 | 2021-03-09 | 17 | 9d | 0d | Key Executive Committee |  |
| 19 | 1.4 | **Form Merger & Acquisition Team** |  | 5d? | 2021-03-02 | 2021-03-08 |  | 0d |  |  | 40h |
| 20 | 1.4.1 | Identify Merger & Acquisition Team Members |  | 1d? | 2021-03-02 | 2021-03-02 | 8 | 0d |  | Key Executive Committee | 8h |
| 21 | 1.4.2 | Document Merger & Acquisition Team Charter |  | 1d? | 2021-03-03 | 2021-03-03 | 20 | 0d |  | Key Executive Committee | 8h |
| 22 | 1.4.3 | Set Merger & Acquisition Team Major Milestones |  | 1d? | 2021-03-04 | 2021-03-04 | 21 | 0d |  | Key Executive Committee | 8h |
| 23 | 1.4.4 | Set Merger & Acquisition Team Process |  | 1d? | 2021-03-05 | 2021-03-05 | 22 | 0d |  | Key Executive Committee | 8h |
| 24 | 1.4.5 | Hold Merger & Acquisition Team Kickoff Meeting |  | 1d? | 2021-03-08 | 2021-03-08 | 23 | 0d |  | Key Executive Committee | 8h |
| 25 | 1.4.6 | Formation of Merger & Acquisition Team Complete | milestone | 0d | 2021-03-08 | 2021-03-08 | 24 | 0d |  |  |  |

| ID | WBS | Task | Type | Duration | Start | Finish | Predecessors | Total slack | Resources | Work |
| --- | --- | --- | --- | --- | --- | --- | --- | --- | --- | --- |
| 26 | 2 | **Define M&A Target Identification and Screening Criteria** |  | 11d? | 2021-03-09 | 2021-03-23 |  | 0d |  | 88h |
| 27 | 2.1 | **Define Target Identification Criteria** |  | 6d? | 2021-03-09 | 2021-03-16 |  | 0d |  | 48h |
| 28 | 2.1.1 | Define Industry, Product, and Channel Criteria |  | 1d? | 2021-03-09 | 2021-03-09 | 19, 25 | 0d | Merger & Acquisition Team | 8h |
| 29 | 2.1.2 | Define Profitability, Capitalization, and Cash Flow Criteria |  | 1d? | 2021-03-10 | 2021-03-10 | 28 | 0d | Merger & Acquisition Team | 8h |
| 30 | 2.1.3 | Define Intellectual Property and R&D Criteria |  | 1d? | 2021-03-11 | 2021-03-11 | 29 | 0d | Merger & Acquisition Team | 8h |
| 31 | 2.1.4 | Define Management, Organization, and Governance Criteria |  | 1d? | 2021-03-12 | 2021-03-12 | 30 | 0d | Merger & Acquisition Team | 8h |
| 32 | 2.1.5 | Define Risk, Legal, and Financial Exposure Criteria |  | 1d? | 2021-03-15 | 2021-03-15 | 31 | 0d | Merger & Acquisition Team | 8h |
| 33 | 2.1.6 | Define and Summarize Synergy Criteria |  | 1d? | 2021-03-16 | 2021-03-16 | 32 | 0d | Merger & Acquisition Team | 8h |
| 34 | 2.1.7 | Target Identification Criteria Complete | milestone | 0d | 2021-03-16 | 2021-03-16 | 33 | 0d |  |  |
| 35 | 2.2 | **Define Quantitative and Qualitative Screening Criteria** |  | 5d? | 2021-03-17 | 2021-03-23 |  | 0d |  | 40h |
| 36 | 2.2.1 | Define Industry, Product, and Channel Screens |  | 1d? | 2021-03-17 | 2021-03-17 | 34 | 0d | Merger & Acquisition Team | 8h |
| 37 | 2.2.2 | Define Profitability, Capitalization, and Cash Flow Screens |  | 1d? | 2021-03-18 | 2021-03-18 | 36 | 0d | Merger & Acquisition Team | 8h |
| 38 | 2.2.3 | Define Intellectual Property and R&D Screens |  | 1d? | 2021-03-19 | 2021-03-19 | 37 | 0d | Merger & Acquisition Team | 8h |
| 39 | 2.2.4 | Define Management, Organization, and Governance Screens |  | 1d? | 2021-03-22 | 2021-03-22 | 38 | 0d | Merger & Acquisition Team | 8h |
| 40 | 2.2.5 | Define Risk, Legal, and Financial Exposure Tolerance Screens |  | 1d? | 2021-03-23 | 2021-03-23 | 39 | 0d | Merger & Acquisition Team | 8h |
| 41 | 2.2.6 | Screening Criteria Complete | milestone | 0d | 2021-03-23 | 2021-03-23 | 40 | 0d |  |  |
| 42 | 3 | **Develop List of Potential Acquisitions** |  | 40d? | 2021-03-10 | 2021-05-04 |  | 0d |  | 248h |
| 43 | 3.1 | Select Investment Banker |  | 1d? | 2021-03-10 | 2021-03-10 | 18 | 9d | Merger & Acquisition Team | 8h |
| 44 | 3.2 | Develop List of Potential Acquisitions |  | 6w | 2021-03-24 | 2021-05-04 | 43, 41 | 0d | Investment Banker | 240h |
| 45 | 3.3 | List of Potential Acquisitions Complete | milestone | 0d | 2021-05-04 | 2021-05-04 | 44 | 0d |  |  |
| 46 | 4 | **Perform M&A Target Valuation Analysis and Due Diligence** |  | 11d? | 2021-05-05 | 2021-05-19 |  | 0d |  | 200h |
| 47 | 4.1 | **Perform Valuation Analysis** |  | 3d? | 2021-05-05 | 2021-05-07 |  | 0d |  | 136h |
| 48 | 4.1.1 | **Perform Financial Valuation Analysis** |  | 3d? | 2021-05-05 | 2021-05-07 |  | 0d |  | 24h |
| 49 | 4.1.1.1 | Define Financial Scenarios |  | 1d? | 2021-05-05 | 2021-05-05 | 45 | 0d | Merger & Acquisition Team | 8h |
| 50 | 4.1.1.2 | Develop Financial Synergy Analysis |  | 1d? | 2021-05-06 | 2021-05-06 | 49 | 0d | Merger & Acquisition Team | 8h |
| 51 | 4.1.1.3 | Define Financial Risks and Opportunities |  | 1d? | 2021-05-07 | 2021-05-07 | 50 | 0d | Merger & Acquisition Team | 8h |

Notes:
- 26: In this section, we develop the criteria to pass to a broker for building a list of company possibilities.
- 50: For example, does this merger/acquisition financially meet the previously defined strategies we are trying to support?

| ID | WBS | Task | Type | Duration | Start | Finish | Predecessors | Total slack | Free slack | Resources | Work |
| --- | --- | --- | --- | --- | --- | --- | --- | --- | --- | --- | --- |
| 52 | 4.1.2 | **Perform Market and Product Analysis** |  | 3d? | 2021-05-05 | 2021-05-07 |  | 0d |  |  | 24h |
| 53 | 4.1.2.1 | Identify Market Synergies |  | 1d? | 2021-05-05 | 2021-05-05 | 45 | 0d |  | Merger & Acquisition Team | 8h |
| 54 | 4.1.2.2 | Identify Product Synergies |  | 1d? | 2021-05-06 | 2021-05-06 | 53 | 0d |  | Merger & Acquisition Team | 8h |
| 55 | 4.1.2.3 | Identify Combined Portfolio Strategies |  | 1d? | 2021-05-07 | 2021-05-07 | 54 | 0d |  | Merger & Acquisition Team | 8h |
| 56 | 4.1.3 | Perform Industry Specific Analysis |  | 1d? | 2021-05-05 | 2021-05-05 | 45 | 2d |  | Merger & Acquisition Team | 8h |
| 57 | 4.1.4 | Perform Intellectual Property and R&D Analysis (if appropriate) |  | 1d? | 2021-05-05 | 2021-05-05 | 45 | 2d |  | Merger & Acquisition Team | 8h |
| 58 | 4.1.5 | **Perform Legal and Gov't Compliance Analysis** |  | 3d? | 2021-05-05 | 2021-05-07 |  | 0d |  |  | 24h |
| 59 | 4.1.5.1 | Define Legal Risks, Issues, and Synergies |  | 1d? | 2021-05-05 | 2021-05-05 | 45 | 0d |  | Merger & Acquisition Team | 8h |
| 60 | 4.1.5.2 | Define SEC Compliance Risks, Issues, and Scenarios |  | 1d? | 2021-05-06 | 2021-05-06 | 59 | 0d |  | Merger & Acquisition Team | 8h |
| 61 | 4.1.5.3 | Define Other Gov't Regulatory Risks, Issues, and Synergies |  | 1d? | 2021-05-07 | 2021-05-07 | 60 | 0d |  | Merger & Acquisition Team | 8h |
| 62 | 4.1.6 | **Perform Management and Corporate Governance Analysis** |  | 3d? | 2021-05-05 | 2021-05-07 |  | 0d |  |  | 24h |
| 63 | 4.1.6.1 | Define Management Synergies and Scenarios |  | 1d? | 2021-05-05 | 2021-05-05 | 45 | 0d |  | Merger & Acquisition Team | 8h |
| 64 | 4.1.6.2 | Define Corporate Governance Synergies and Scenarios |  | 1d? | 2021-05-06 | 2021-05-06 | 63 | 0d |  | Merger & Acquisition Team | 8h |
| 65 | 4.1.6.3 | Define Institutional Shareholder Synergies, Impacts, and Scenarios |  | 1d? | 2021-05-07 | 2021-05-07 | 64 | 0d |  | Merger & Acquisition Team | 8h |
| 66 | 4.1.7 | **Finalize Due Diligence Checklists** |  | 3d? | 2021-05-05 | 2021-05-07 |  | 15d |  |  | 24h |
| 67 | 4.1.7.1 | Prioritize Due Diligence Activities |  | 1d? | 2021-05-05 | 2021-05-05 | 45 | 15d | 0d | Merger & Acquisition Team | 8h |
| 68 | 4.1.7.2 | Assign Due Diligence Activities |  | 1d? | 2021-05-06 | 2021-05-06 | 67 | 15d | 0d | Merger & Acquisition Team | 8h |
| 69 | 4.1.7.3 | Define Due Diligence Schedule |  | 1d? | 2021-05-07 | 2021-05-07 | 68 | 15d |  | Merger & Acquisition Team | 8h |
| 70 | 4.1.8 | Valuation Analysis Complete | milestone | 0d | 2021-05-07 | 2021-05-07 | 51, 55, 56, 57, 61, 65 | 0d |  |  |  |
| 71 | 4.2 | **Perform Due Diligence Activities** |  | 8d? | 2021-05-10 | 2021-05-19 |  | 0d |  |  | 64h |
| 72 | 4.2.1 | Perform Fiscal Cost/Benefit Due Diligence |  | 1d? | 2021-05-10 | 2021-05-10 | 70 | 0d |  | Merger & Acquisition Team | 8h |
| 73 | 4.2.2 | Perform Financial Reporting Requirements Due Diligence |  | 1d? | 2021-05-11 | 2021-05-11 | 72 | 0d |  | Merger & Acquisition Team | 8h |
| 74 | 4.2.3 | Perform Market and Product Due Diligence |  | 1d? | 2021-05-12 | 2021-05-12 | 73 | 0d |  | Merger & Acquisition Team | 8h |
| 75 | 4.2.4 | Perform Industry-Specific Due Diligence |  | 1d? | 2021-05-13 | 2021-05-13 | 74 | 0d |  | Merger & Acquisition Team | 8h |
| 76 | 4.2.5 | Perform Intellectual Property and R&D Due Diligence |  | 1d? | 2021-05-14 | 2021-05-14 | 75 | 0d |  | Merger & Acquisition Team | 8h |
| 77 | 4.2.6 | Perform Legal, Risk, and Government Compliance Due Diligence |  | 1d? | 2021-05-17 | 2021-05-17 | 76 | 0d |  | Merger & Acquisition Team | 8h |
| 78 | 4.2.7 | Perform Management and Corporate Governance Due Diligence |  | 1d? | 2021-05-18 | 2021-05-18 | 77 | 0d |  | Merger & Acquisition Team | 8h |
| 79 | 4.2.8 | Compile Results of Due Diligence Assessment |  | 1d? | 2021-05-19 | 2021-05-19 | 78 | 0d |  | Merger & Acquisition Team | 8h |
| 80 | 4.2.9 | Due Diligence Assessment Complete | milestone | 0d | 2021-05-19 | 2021-05-19 | 79 | 0d |  |  |  |
| 81 | 4.3 | Valuation and Due Diligence Complete | milestone | 0d | 2021-05-19 | 2021-05-19 | 70, 80 | 0d |  |  |  |

Notes:
- 56: For example, for a Manufacturing company: / - Define Global/Local Distribution channel Analysis / - Define Supply Chain Synergies and Risks
- 75: An example of industry-specific due diligence is an analysis of manufacturing and distribution capabilities, or other industry-specific fulfillment related processes.

| ID | WBS | Task | Type | Duration | Start | Finish | Predecessors | Total slack | Resources | Work |
| --- | --- | --- | --- | --- | --- | --- | --- | --- | --- | --- |
| 82 | 5 | **Perform Selection** |  | 2d? | 2021-05-20 | 2021-05-21 |  | 0d |  | 24h |
| 83 | 5.1 | Present Selection Results |  | 1d? | 2021-05-20 | 2021-05-20 | 81 | 0d | Merger & Acquisition Team; Key Executive Committee | 16h |
| 84 | 5.2 | Confirm Initial Selection |  | 1d? | 2021-05-21 | 2021-05-21 | 83 | 0d | Key Executive Committee | 8h |
| 85 | 5.3 | Initial Selection Complete | milestone | 0d | 2021-05-21 | 2021-05-21 | 84 | 0d |  |  |
| 86 | 6 | **Perform Investment Activities** |  | 5d? | 2021-05-24 | 2021-05-28 |  | 0d |  | 40h |
| 87 | 6.1 | Develop Merger/Acquisition Financing Strategies |  | 1d? | 2021-05-24 | 2021-05-24 | 85 | 0d | Merger & Acquisition Team | 8h |
| 88 | 6.2 | Develop SEC Documents |  | 1d? | 2021-05-25 | 2021-05-25 | 87 | 0d | Merger & Acquisition Team | 8h |
| 89 | 6.3 | Secure Financing |  | 1d? | 2021-05-26 | 2021-05-26 | 88 | 0d | Merger & Acquisition Team | 8h |
| 90 | 6.4 | Prepare and Hold Proxy Vote |  | 1d? | 2021-05-27 | 2021-05-27 | 89 | 0d | Merger & Acquisition Team | 8h |
| 91 | 6.5 | Finalize Investment Activities |  | 1d? | 2021-05-28 | 2021-05-28 | 90 | 0d | Merger & Acquisition Team | 8h |
| 92 | 6.6 | Complete Transaction | milestone | 0d | 2021-05-28 | 2021-05-28 | 91 | 0d | Key Executive Committee |  |
| 93 | 7 | Merger & Acquisition Transaction Complete | milestone | 0d | 2021-05-28 | 2021-05-28 | 92 | 0d |  |  |
