# Simple Formatting

Schedule from MS Project, 2015-01-05 to 2015-02-24, costs in $, A marks actual dates.
New book launch schedule
Lucerne Publishing
New children's book for spring release

## Calendars

- Standard: Mon-Fri 08:00-12:00, 13:00-17:00; Sat-Sun off. Exceptions (off unless hours are given): 2015-01-22 (Staff at morale event).

## Resources

| Resource | Rate | Notes |
| --- | --- | --- |
| Phạm Tấn Hoàng | 42 |  |
| Trương Thanh Mai | 27.5 | Sharons standard pay rate is adjusted for her half-time work schedule. |
| Nguyễn Thúy An | 67.5 | Toby worked on launch campaigns for Toni Poes previous two books. |
| Tạ Thanh Hải |  |  |
| Lại Hữu Diệp | 55 |  |
| Các biên tập viên | 45 |  |
| Đi lại |  |  |
| Trần Thanh Điện | 52.5 |  |
| Mai Thanh Hà | 75.5 |  |
| Huỳnh Phương Nam | 38.75 |  |
| Lê Xuân Thy | 55 |  |
| Phan Hoàng Lãm | 69.5 |  |
| Trịnh ThanhTùng | 48 |  |
| Lâm Chí Minh | 70 |  |
| Dịch vụ in |  |  |
| Võ Minh Lâm | 44 |  |
| Vương Huỳnh Long | 22 |  |
| Long Xuân Thức |  |  |

## Schedule

| ID | WBS | Task | Type | Duration | Start | Finish | Predecessors | Complete | Remaining | Baseline start | Baseline finish | Baseline duration | Total slack | Free slack | Resources | Work | Actual work | Cost | Baseline cost | Actual cost |
| --- | --- | --- | --- | --- | --- | --- | --- | --- | --- | --- | --- | --- | --- | --- | --- | --- | --- | --- | --- | --- |
| 1 | 1 | **Giai đoạn lập kế hoạch** |  | 11d | 2015-01-05 A | 2015-01-19 |  | 48% | 5.76d | 2015-01-05 | 2015-01-19 | 11d | 0d |  |  | 248h | 160h | 11,900 | 11,900 | 9,800 |
| 2 | 1.1 | Phân việc cho các thành viên trong nhóm phát hành |  | 1d | 2015-01-05 | 2015-01-05 |  |  |  | 2015-01-05 | 2015-01-05 | 1d | 5d | 0d | Trần Thanh Điện | 8h |  | 420 | 420 |  |
| 3 | 1.2 | Hoàn thành bảng câu hỏi tác giả |  | 1w | 2015-01-06 | 2015-01-12 | 2 |  |  | 2015-01-06 | 2015-01-12 | 1w | 5d |  | Tạ Thanh Hải | 40h |  |  |  |  |
| 4 | 1.3 | Lập lịch phỏng vấn tác giả |  | 1w | 2015-01-05 | 2015-01-12 | 2 |  |  | 2015-01-05 | 2015-01-12 | 1w | 5d |  | Phạm Tấn Hoàng | 40h |  | 1,680 | 1,680 |  |
| 5 | 1.4 | Thiết kế và đặt hàng tài liệu tiếp thi |  | 2w | 2015-01-06 A | 2015-01-19 A | 2 | 100% |  | 2015-01-06 | 2015-01-19 | 2w |  |  | Nguyễn Thúy An; Lại Hữu Diệp | 160h | 160h | 9,800 | 9,800 | 9,800 |
| 6 | 1.5 | Việc lập kế hoạch hoàn thành! | milestone | 0d | 2015-01-19 A | 2015-01-19 A | 5 | 100% |  | 2015-01-19 | 2015-01-19 | 0d |  |  |  |  |  |  |  |  |
| 7 | 2 | **Giai đoạn phát hành nội bộ** |  | 13d | 2015-01-20 A | 2015-02-06 | 1 | 44% | 7.28d | 2015-01-20 | 2015-02-06 | 13d | 0d |  |  | 300h | 92h | 14,802 | 13,942 | 4,990 |
| 8 | 2.1 | Khởi động họp ra mắt cuốn sách |  | 1d | 2015-01-20 A | 2015-01-20 A |  | 100% |  | 2015-01-20 | 2015-01-20 | 1d |  |  | Trương Thanh Mai [50%]; Nguyễn Thúy An | 12h | 12h | 650 | 650 | 650 |
| 9 | 2.2 | Chuẩn bị báo cáo lời - lỗ của cuốn sách |  | 3d | 2015-01-21 A | 2015-01-26 A | 8 | 100% |  | 2015-01-21 | 2015-01-23 | 2d |  |  | Trần Thanh Điện | 24h | 24h | 1,260 | 840 | 1,260 |
| 10 | 2.3 | Lập kế hoạch cho hành trình của tác giả |  | 7d | 2015-01-20 A | 2015-01-29 A | 8 | 100% |  | 2015-01-21 | 2015-01-29 | 6d |  |  | Lê Xuân Thy | 56h | 56h | 3,080 | 2,640 | 3,080 |
| 11 | 2.4 | Xác định kênh đại diện bán hàng |  | 1w | 2015-01-21 | 2015-01-28 | 8 |  |  | 2015-01-21 | 2015-01-28 | 1w | 0d |  | Lại Hữu Diệp; Huỳnh Phương Nam | 80h |  | 3,750 | 3,750 |  |
| 12 | 2.5 | Hoàn thành biểu mẫu phát hành sách |  | 2d | 2015-01-29 | 2015-01-30 | 11 |  |  | 2015-01-29 | 2015-01-30 | 2d | 5d |  | Nguyễn Thúy An; Vương Huỳnh Long | 32h |  | 1,432 | 1,432 |  |
| 13 | 2.6 | Chuẩn bị bộ bán sách |  | 1w | 2015-01-29 | 2015-02-04 | 8, 11 |  |  | 2015-01-29 | 2015-02-04 | 1w | 0d |  | Huỳnh Phương Nam; Lại Hữu Diệp | 80h |  | 3,750 | 3,750 |  |
| 14 | 2.7 | Phát hành tài liệu tiếp thị nội bộ |  | 2d | 2015-02-05 | 2015-02-06 | 13 |  |  | 2015-02-05 | 2015-02-06 | 2d | 0d |  | Lại Hữu Diệp | 16h |  | 880 | 880 |  |
| 15 | 3 | **Giai đoạn phát hành ra công chúng** |  | 12d | 2015-02-09 | 2015-02-24 | 7 |  |  | 2015-02-09 | 2015-02-24 | 12d | 0d |  |  | 280h |  | 13,352 | 13,352 |  |
| 16 | 3.1 | **Đi lại và sự xuất hiện của tác giả** |  | 2d | 2015-02-09 | 2015-02-10 |  |  |  | 2015-02-09 | 2015-02-10 | 2d | 10d |  |  | 16h |  | 800 | 800 |  |
| 17 | 3.1.1 | Phỏng vấn tác giả |  | 1d | 2015-02-09 | 2015-02-09 |  |  |  | 2015-02-09 | 2015-02-09 | 1d | 10d | 0d | Tạ Thanh Hải | 8h |  |  |  |  |
| 18 | 3.1.2 | Tác giả đọc và ký sách tại hội chợ |  | 1d | 2015-02-10 | 2015-02-10 | 17 |  |  | 2015-02-10 | 2015-02-10 | 1d | 10d |  | Tạ Thanh Hải; Đi lại [0.1%] | 8h |  | 800 | 800 |  |
| 19 | 3.2 | Phân phối các bản in |  | 2d | 2015-02-09 | 2015-02-10 |  |  |  | 2015-02-09 | 2015-02-10 | 2d | 10d |  | Nguyễn Thúy An; Vương Huỳnh Long | 32h |  | 1,432 | 1,432 |  |
| 20 | 3.3 | Phân phối bộ bán sách |  | 2d | 2015-02-09 | 2015-02-10 |  |  |  | 2015-02-09 | 2015-02-10 | 2d | 0d |  | Lại Hữu Diệp | 16h |  | 880 | 880 |  |
| 21 | 3.4 | Kết hợp các bài báo điểm tin nổi bật |  | 7d | 2015-02-11 | 2015-02-19 | 20 |  |  | 2015-02-11 | 2015-02-19 | 7d | 3d |  | Lại Hữu Diệp | 56h |  | 3,080 | 3,080 |  |
| 22 | 3.5 | Thông báo trên cổng thông tin |  | 1w | 2015-02-11 | 2015-02-17 | 20 |  |  | 2015-02-11 | 2015-02-17 | 1w | 0d |  | Nguyễn Thúy An; Vương Huỳnh Long | 80h |  | 3,580 | 3,580 |  |
| 23 | 3.6 | Giới thiệu các chương trình truyền thông xã hội về cuốn sách |  | 1w | 2015-02-18 | 2015-02-24 | 22 |  |  | 2015-02-18 | 2015-02-24 | 1w | 0d |  | Nguyễn Thúy An; Vương Huỳnh Long | 80h |  | 3,580 | 3,580 |  |
| 24 | 3.7 | Việc phát hành hoàn thành! | milestone | 0d | 2015-02-24 | 2015-02-24 | 21, 22, 23 |  |  | 2015-02-24 | 2015-02-24 | 0d | 0d |  |  |  |  |  |  |  |

Notes:
- 19: Get recipient list from publicist
