# Wine Tasting Fundraiser

Schedule from MS Project, 2021-02-24 to 2021-10-04, costs in $.
This Project template identifies tasks and a basic schedule for a fundraising event that includes and auction and wine tasting. / The schedule is based on a tentative event date of 12/6/2008. / The file includes a fundraiser calendar with an exception that defines the work hours for the day of the event. / The view Day of Event shows only the tasks on the day of the event hour by hour. / Double-click note icons in the Indicators column to learn more about individual tasks.

## Calendars

- Fund Raiser: Mon-Fri 08:00-12:00, 13:00-17:00; Sat-Sun off.

## Resources

| Resource |
| --- |
| Volunteer Team |
| Chairperson |
| Board of Directors |
| Auction Manager |
| Wine Tasting Manager |
| Publicity Manager |
| Caterer |
| Music |
| Wine Vendor |
| Printer |
| Auctioneer |
| Techie |

## Schedule

| ID | WBS | Task | Type | Duration | Start | Finish | Predecessors | Total slack | Free slack | Resources | Work | Cost |
| --- | --- | --- | --- | --- | --- | --- | --- | --- | --- | --- | --- | --- |
| 1 | 1 | **Initiation** |  | 3.5d | 2021-02-24 08:00 | 2021-03-01 12:00 |  | 76d |  |  | 32h |  |
| 2 | 1.1 | Prepare proposal for event and budget |  | 3d | 2021-02-24 08:00 | 2021-02-26 17:00 |  | 76d | 0d | Chairperson | 24h |  |
| 3 | 1.2 | Hold kick-off meeting |  | 4h | 2021-03-01 08:00 | 2021-03-01 12:00 | 2 | 76d | 0d | Board of Directors; Chairperson | 8h |  |
| 4 | 2 | **Planning** |  | 18.25d | 2021-03-01 13:00 | 2021-03-25 15:00 | 3 | 76d |  |  | 208.4h | 200 |
| 5 | 2.1 | **Event Location** |  | 13.25d | 2021-03-01 13:00 | 2021-03-18 15:00 |  | 81d |  |  | 28h |  |
| 6 | 2.1.1 | Identify potential locations |  | 10d | 2021-03-01 13:00 | 2021-03-15 12:00 |  | 81d | 0d | Volunteer Team [10%] | 8h |  |
| 7 | 2.1.2 | Prepare notes on locations |  | 1d | 2021-03-15 13:00 | 2021-03-16 12:00 | 6 | 81d | 0d | Volunteer Team | 8h |  |
| 8 | 2.1.3 | Choose location |  | 1d | 2021-03-16 13:00 | 2021-03-17 12:00 | 7 | 81d | 0d | Chairperson | 8h |  |
| 9 | 2.1.4 | Reserve location |  | 1d | 2021-03-17 13:00 | 2021-03-18 12:00 | 8 | 81d | 0d | Chairperson [25%] | 2h |  |
| 10 | 2.1.5 | Sign location contract and pay deposit |  | 0.25d | 2021-03-18 13:00 | 2021-03-18 15:00 | 9 | 81d | 5d | Chairperson | 2h |  |
| 11 | 2.2 | **Permits** |  | 0.5d | 2021-03-01 13:00 | 2021-03-01 17:00 |  | 94d |  |  | 6h | 50 |
| 12 | 2.2.1 | Obtain liquor permit |  | 0.25d | 2021-03-01 13:00 | 2021-03-01 15:00 |  | 154.75d | 0d | Chairperson | 2h | 25 |
| 13 | 2.2.2 | Obtain health department permit |  | 0.25d | 2021-03-01 13:00 | 2021-03-01 15:00 |  | 94d | 0d | Chairperson | 2h | 25 |
| 14 | 2.2.3 | Permits obtained | milestone | 0d | 2021-03-01 15:00 | 2021-03-01 15:00 | 13 | 94d | 0d |  |  |  |
| 15 | 2.2.4 | Post permits as required |  | 0.25d | 2021-03-01 15:00 | 2021-03-01 17:00 | 12, 14 | 154.75d |  | Volunteer Team | 2h |  |
| 16 | 2.3 | **Printing Service** |  | 9d | 2021-03-01 13:00 | 2021-03-12 12:00 |  | 85.25d |  |  | 28.8h |  |
| 17 | 2.3.1 | Identify printing services |  | 6d | 2021-03-01 13:00 | 2021-03-09 12:00 |  | 85.25d | 0d | Volunteer Team [10%] | 4.8h |  |
| 18 | 2.3.2 | Prepare notes on printing services |  | 1d | 2021-03-09 13:00 | 2021-03-10 12:00 | 17 | 85.25d | 0d | Volunteer Team | 8h |  |
| 19 | 2.3.3 | Choose printing service |  | 1d | 2021-03-10 13:00 | 2021-03-11 12:00 | 18 | 85.25d | 0d | Publicity Manager | 8h |  |
| 20 | 2.3.4 | Sign printing contract |  | 1d | 2021-03-11 13:00 | 2021-03-12 12:00 | 19 | 85.25d | 9.25d | Chairperson | 8h |  |
| 21 | 2.4 | **Food Plan** |  | 18.25d | 2021-03-01 13:00 | 2021-03-25 15:00 |  | 76d |  |  | 28h | 150 |
| 22 | 2.4.1 | Identify potential caterers |  | 10d | 2021-03-01 13:00 | 2021-03-15 12:00 |  | 76d | 0d | Volunteer Team [10%] | 8h |  |
| 23 | 2.4.2 | Request proposal |  | 0.25d | 2021-03-15 13:00 | 2021-03-15 15:00 | 22 | 76d | 0d | Volunteer Team | 2h |  |
| 24 | 2.4.3 | Prepare notes on caterer proposals |  | 1d | 2021-03-22 15:00 | 2021-03-23 15:00 | 23FS+5d | 76d | 0d | Volunteer Team | 8h |  |
| 25 | 2.4.4 | Choose caterer |  | 1d | 2021-03-23 15:00 | 2021-03-24 15:00 | 24 | 76d | 0d | Chairperson | 8h |  |
| 26 | 2.4.5 | Sign caterer contract |  | 1d | 2021-03-24 15:00 | 2021-03-25 15:00 | 25 | 76d | 0d | Chairperson [25%] | 2h | 150 |

Notes:
- 3: Confirm the fundraising goals based on organization budget. / Define the event, including the program of activities, best dates, and target number of attendees. / Assign management roles.
- 6: Consider budget, space layout, and occupancy
- 15: County governments typically require you to post permits a number of days before an event
- 25: Based on price, availability, menu, and range of services. / If not using caterer, must plan for preparing food; obtaining all serving utensils and equipment; obtaining non-wine drinks and ice; obtaining glassware, plates, eating utensils, and napkins.

| ID | WBS | Task | Type | Duration | Start | Finish | Predecessors | Total slack | Free slack | Resources | Work |
| --- | --- | --- | --- | --- | --- | --- | --- | --- | --- | --- | --- |
| 27 | 2.5 | **Wine Tasting Plan** |  | 14d | 2021-03-01 13:00 | 2021-03-19 12:00 |  | 80.25d |  |  | 40h |
| 28 | 2.5.1 | Identify wine tasting vendors |  | 10d | 2021-03-01 13:00 | 2021-03-15 12:00 |  | 80.25d | 0d | Volunteer Team [10%] | 8h |
| 29 | 2.5.2 | Prepare notes on wine options |  | 1d | 2021-03-15 13:00 | 2021-03-16 12:00 | 28 | 80.25d | 0d | Volunteer Team | 8h |
| 30 | 2.5.3 | Choose wine tasting vendor |  | 1d | 2021-03-16 13:00 | 2021-03-17 12:00 | 29 | 80.25d | 0d | Wine Tasting Manager | 8h |
| 31 | 2.5.4 | Sign wine vendor contract |  | 1d | 2021-03-17 13:00 | 2021-03-18 12:00 | 30 | 80.25d | 0d | Chairperson | 8h |
| 32 | 2.5.5 | Choose wine list |  | 1d | 2021-03-18 13:00 | 2021-03-19 12:00 | 31 | 80.25d | 4.25d | Wine Tasting Manager | 8h |
| 33 | 2.6 | **Auction Plan** |  | 12d | 2021-03-01 13:00 | 2021-03-17 12:00 |  | 82.25d |  |  | 52.8h |
| 34 | 2.6.1 | Identify potential auctioneers |  | 6d | 2021-03-01 13:00 | 2021-03-09 12:00 |  | 82.25d | 0d | Volunteer Team [10%] | 4.8h |
| 35 | 2.6.2 | Choose auctioneer |  | 1d | 2021-03-09 13:00 | 2021-03-10 12:00 | 34 | 82.25d | 0d | Auction Manager | 8h |
| 36 | 2.6.3 | Sign auctioneer contract |  | 1d | 2021-03-10 13:00 | 2021-03-11 12:00 | 35 | 82.25d | 0d | Chairperson | 8h |
| 37 | 2.6.4 | Create donation forms |  | 2d | 2021-03-11 13:00 | 2021-03-15 12:00 | 36 | 82.25d | 0d | Auction Manager | 16h |
| 38 | 2.6.5 | Create donation tracking mechanism |  | 2d | 2021-03-15 13:00 | 2021-03-17 12:00 | 37 | 82.25d | 6.25d | Auction Manager | 16h |
| 39 | 2.7 | **Music Plan** |  | 10d | 2021-03-01 13:00 | 2021-03-15 12:00 |  | 84.25d |  |  | 24.8h |
| 40 | 2.7.1 | Identify potential music options |  | 6d | 2021-03-01 13:00 | 2021-03-09 12:00 |  | 84.25d | 0d | Volunteer Team [10%] | 4.8h |
| 41 | 2.7.2 | Prepare notes on music options |  | 1d | 2021-03-09 13:00 | 2021-03-10 12:00 | 40 | 84.25d | 0d | Volunteer Team | 8h |
| 42 | 2.7.3 | Choose music option |  | 1d | 2021-03-10 13:00 | 2021-03-11 12:00 | 41 | 84.25d | 0d | Chairperson | 8h |
| 43 | 2.7.4 | Reserve music option |  | 1d | 2021-03-11 13:00 | 2021-03-12 12:00 | 42 | 84.25d | 0d | Chairperson [25%] | 2h |
| 44 | 2.7.5 | Sign music contract and pay deposit |  | 1d | 2021-03-12 13:00 | 2021-03-15 12:00 | 43 | 84.25d | 8.25d | Chairperson [25%] | 2h |
| 45 | 3 | Planning complete | milestone | 0d | 2021-03-25 15:00 | 2021-03-25 15:00 | 10, 14, 44, 26, 32, 38, 20 | 76d | 0d |  |  |
| 46 | 4 | **Preparation** |  | 110.75d | 2021-03-25 15:00 | 2021-08-27 12:00 | 45 | 26.25d |  |  | 820h |
| 47 | 4.1 | **Sponsorships and Donations** |  | 61d | 2021-03-25 15:00 | 2021-06-18 15:00 |  | 76d |  |  | 560h |
| 48 | 4.1.1 | Identify sponsorship options |  | 1d | 2021-03-25 15:00 | 2021-03-26 15:00 |  | 76d | 0d | Chairperson | 8h |
| 49 | 4.1.2 | Recruit sponsors from businesses and other organizations |  | 12w | 2021-03-26 15:00 | 2021-06-18 15:00 | 48 | 76d | 0d | Volunteer Team [50%] | 240h |
| 50 | 4.1.3 | Obtain auction donations |  | 12w | 2021-03-25 15:00 | 2021-06-17 15:00 |  | 77d | 0d | Volunteer Team [50%] | 240h |
| 51 | 4.1.4 | Track sponsorships and donations |  | 12w | 2021-03-26 15:00 | 2021-06-18 15:00 | 49SS, 50SS | 76d | 0d | Auction Manager [5%] | 24h |
| 52 | 4.1.5 | Receive and store donations |  | 12w | 2021-03-25 15:00 | 2021-06-17 15:00 | 50SS | 77d | 1d | Auction Manager [10%] | 48h |
| 53 | 4.1.6 | Sponsorships and donations complete | milestone | 0d | 2021-06-18 15:00 | 2021-06-18 15:00 | 49, 50, 51, 52 | 76d | 49.75d |  |  |

Notes:
- 29: Without a vendor for the wine tasting, the project must include tasks for purchasing wine for the tasting; renting glassware, spit buckets, and water pitchers; preparing tasting notes; arranging for discounted wine purchases from a liquor store for wine sales.
- 30: Based on price, tasting services offered, percentage of sales donated to fundraiser.
- 42: Based on budget and availability
- 48: For example, wine tasting, printing, flowers at event.
- 49: Several volunteers can perform this task so the number of hours per volunteer is very low.
- 50: Several volunteers can perform this task so the number of hours per volunteer is very low.

| ID | WBS | Task | Type | Duration | Start | Finish | Predecessors | Total slack | Free slack | Resources | Work |
| --- | --- | --- | --- | --- | --- | --- | --- | --- | --- | --- | --- |
| 54 | 4.2 | **Publicity and Printing** |  | 108.5d | 2021-03-25 15:00 | 2021-08-25 10:00 |  | 28.5d |  |  | 248h |
| 55 | 4.2.1 | **Publicity** |  | 106.5d | 2021-03-25 15:00 | 2021-08-23 10:00 |  | 30.5d |  |  | 48h |
| 56 | 4.2.1.1 | Prepare event publicity message |  | 0.5d | 2021-03-25 15:00 | 2021-03-26 10:00 |  | 83.5d | 0d | Publicity Manager | 4h |
| 57 | 4.2.1.2 | Create flyer, newsletter article, and ad |  | 1d | 2021-03-26 10:00 | 2021-03-29 10:00 | 56 | 128.5d | 0d | Publicity Manager | 8h |
| 58 | 4.2.1.3 | Print flyers |  | 2d | 2021-03-29 10:00 | 2021-03-31 10:00 | 57 | 128.5d | 0d | Publicity Manager | 16h |
| 59 | 4.2.1.4 | Place flyers at stores |  | 5d | 2021-03-31 10:00 | 2021-04-07 10:00 | 58 | 128.5d | 98d | Volunteer Team [10%] | 4h |
| 60 | 4.2.1.5 | Send event message to email list |  | 0.25d | 2021-03-29 10:00 | 2021-03-29 12:00 | 57 | 134.75d | 69.5d | Publicity Manager | 2h |
| 61 | 4.2.1.6 | Send second event message to email list |  | 0.25d | 2021-07-05 08:00 | 2021-07-05 10:00 | 60, 87FS-2mo | 65.25d | 29.75d | Publicity Manager | 2h |
| 62 | 4.2.1.7 | Send final reminder email to email list |  | 0.25d | 2021-08-16 08:00 | 2021-08-16 10:00 | 61, 87FS-2w | 35.5d | 5d | Publicity Manager | 2h |
| 63 | 4.2.1.8 | Put ads in newspapers |  | 2d | 2021-08-02 08:00 | 2021-08-03 17:00 | 57, 87FS-1mo | 43.75d | 13.25d | Publicity Manager [50%] | 8h |
| 64 | 4.2.1.9 | Radio interview |  | 0.25d | 2021-08-23 08:00 | 2021-08-23 10:00 | 57, 87FS-1w | 30.5d | 0d | Publicity Manager | 2h |
| 65 | 4.2.1.10 | Publicity complete | milestone | 0d | 2021-08-23 10:00 | 2021-08-23 10:00 | 59, 62, 63, 64 | 30.5d | 4.25d |  |  |
| 66 | 4.2.2 | **Invitations** |  | 8d | 2021-03-26 10:00 | 2021-04-07 10:00 |  | 83.5d |  |  | 46h |
| 67 | 4.2.2.1 | Design invitation |  | 2d | 2021-03-26 10:00 | 2021-03-30 10:00 | 56 | 83.5d | 0d | Publicity Manager [25%] | 4h |
| 68 | 4.2.2.2 | Deliver invitation to printer to print and mail |  | 1d | 2021-03-30 10:00 | 2021-03-31 10:00 | 67 | 83.5d | 0d | Publicity Manager [25%] | 2h |
| 69 | 4.2.2.3 | Print and mail invitations |  | 5d | 2021-03-31 10:00 | 2021-04-07 10:00 | 68 | 83.5d | 52.75d | Printer | 40h |
| 70 | 4.2.3 | **Ticket Sales** |  | 108.5d | 2021-03-25 15:00 | 2021-08-25 10:00 |  | 28.5d |  |  | 65.6h |
| 71 | 4.2.3.1 | Set up online ticket purchase |  | 5d | 2021-03-25 15:00 | 2021-04-01 15:00 |  | 86d | 0d | Techie [10%] | 4h |
| 72 | 4.2.3.2 | Set up credit card service |  | 5d | 2021-03-25 15:00 | 2021-04-01 15:00 |  | 87d | 56.25d | Techie | 40h |
| 73 | 4.2.3.3 | Create ticket sales database |  | 1d | 2021-04-01 15:00 | 2021-04-02 15:00 | 71 | 86d | 55.25d | Techie [20%] | 1.6h |
| 74 | 4.2.3.4 | Receive and track ticket purchases |  | 9w | 2021-06-21 08:00 | 2021-08-20 17:00 | 69, 73, 87FS-10w, 72 | 30.75d | 2.25d | Chairperson [5%] | 18h |
| 75 | 4.2.3.5 | Prepare list of ticket purchasers for registration table |  | 0.25d | 2021-08-25 08:00 | 2021-08-25 10:00 | 87FS-3d | 28.5d | 0d | Chairperson | 2h |
| 76 | 4.2.3.6 | Ticket sales prep complete | milestone | 0d | 2021-08-25 10:00 | 2021-08-25 10:00 | 74, 75 | 28.5d | 2.25d |  |  |
| 77 | 4.2.4 | **Event Materials** |  | 10d | 2021-03-25 15:00 | 2021-04-08 15:00 |  | 127d |  |  | 88.4h |
| 78 | 4.2.4.1 | Create signs |  | 10d | 2021-03-25 15:00 | 2021-04-08 15:00 |  | 127d | 0d | Printer | 80h |
| 79 | 4.2.4.2 | Print wine list and tasting notes |  | 2d | 2021-03-25 15:00 | 2021-03-29 15:00 | 32 | 133d | 0d | Publicity Manager [20%] | 3.2h |
| 80 | 4.2.4.3 | Print wine order forms |  | 2d | 2021-03-29 15:00 | 2021-03-31 15:00 | 79 | 133d | 6d | Publicity Manager [20%] | 3.2h |
| 81 | 4.2.4.4 | Buy raffle tickets |  | 2h | 2021-03-25 15:00 | 2021-03-25 17:00 |  | 136.75d | 9.75d | Volunteer Team | 2h |
| 82 | 4.2.4.5 | Event materials complete | milestone | 0d | 2021-04-08 15:00 | 2021-04-08 15:00 | 78, 80, 81 | 127d | 100.75d |  |  |

Notes:
- 56: include big ticket auction items along with event info
- 67: description of wine tasting, how many, how much, tasting notes, auction items

| ID | WBS | Task | Type | Duration | Start | Finish | Predecessors | Total slack | Free slack | Constraint | Resources | Work |
| --- | --- | --- | --- | --- | --- | --- | --- | --- | --- | --- | --- | --- |
| 83 | 4.3 | **Decorations** |  | 4.5d | 2021-08-23 08:00 | 2021-08-27 12:00 |  | 26.25d | 0d |  |  | 12h |
| 84 | 4.3.1 | Buy or rent decorations |  | 1d | 2021-08-23 08:00 | 2021-08-23 17:00 | 87FS-1w | 29.75d |  |  | Volunteer Team | 8h |
| 85 | 4.3.2 | Buy centerpieces for tables |  | 0.5d | 2021-08-27 08:00 | 2021-08-27 12:00 | 87FS-1d | 26.25d |  |  | Volunteer Team | 4h |
| 86 | 4.4 | Preparations complete | milestone | 0d | 2021-08-27 12:00 | 2021-08-27 12:00 | 53, 65, 82, 83, 76 | 26.25d |  |  |  |  |
| 87 | 5 | Day of event | milestone | 0d | 2021-08-30 08:00 | 2021-08-30 08:00 |  | 0.38d | 0d | start no earlier than 2021-08-30 08:00 |  |  |
| 88 | 6 | **Event Day** |  | 1d | 2021-08-30 13:00 | 2021-08-31 12:00 | 87 | -0.12d | 0d |  |  | 103.5h |
| 89 | 6.1 | Event location available | milestone | 0d | 2021-08-30 13:00 | 2021-08-30 13:00 |  | -0.12d | 0d | start no earlier than 2021-08-30 13:00 |  |  |
| 90 | 6.2 | **Setup** |  | 0.62d | 2021-08-30 13:00 | 2021-08-31 09:00 | 89 | -0.12d | 0d |  |  | 42.5h |
| 91 | 6.2.1 | **Furniture Setup** |  | 0.5d | 2021-08-30 13:00 | 2021-08-30 17:00 |  | -0.12d | 0d |  |  | 21h |
| 92 | 6.2.1.1 | Set up registration and payment table |  | 2h | 2021-08-30 13:00 | 2021-08-30 15:00 |  | 0.25d |  |  | Volunteer Team [200%] | 4h |
| 93 | 6.2.1.2 | Set up auction, food, and wine tasting tables |  | 2h | 2021-08-30 13:00 | 2021-08-30 15:00 |  | -0.12d | 0d |  | Volunteer Team [400%] | 8h |
| 94 | 6.2.1.3 | Set up tables and chairs |  | 1h | 2021-08-30 15:00 | 2021-08-30 16:00 | 93 | 0d |  |  | Volunteer Team [400%] | 4h |
| 95 | 6.2.1.4 | Decorate tables |  | 1h | 2021-08-30 16:00 | 2021-08-30 17:00 | 93, 94 | 0d |  |  | Volunteer Team [200%] | 2h |
| 96 | 6.2.1.5 | Put up decorations |  | 1.5h | 2021-08-30 13:00 | 2021-08-30 14:30 |  | 0.31d |  |  | Volunteer Team [200%] | 3h |
| 97 | 6.2.1.6 | Furniture setup complete | milestone | 0d | 2021-08-30 17:00 | 2021-08-30 17:00 | 92, 95, 96 | 0d |  |  |  |  |
| 98 | 6.2.2 | **Food Setup** |  | 0.5d | 2021-08-30 13:00 | 2021-08-30 17:00 |  | 0d |  |  |  | 4h |
| 99 | 6.2.2.1 | Deliver food and supplies |  | 2h | 2021-08-30 13:00 | 2021-08-30 15:00 |  | 0d |  |  | Caterer | 2h |
| 100 | 6.2.2.2 | Set up food, drinks, and supplies |  | 2h | 2021-08-30 15:00 | 2021-08-30 17:00 | 99, 93 | 0d |  |  | Caterer | 2h |
| 101 | 6.2.2.3 | Food setup complete | milestone | 0d | 2021-08-30 17:00 | 2021-08-30 17:00 | 100 | 0d |  |  |  |  |
| 102 | 6.2.3 | **Auction Setup** |  | 0.38d | 2021-08-30 15:00 | 2021-08-31 09:00 |  | -0.12d | 0d |  |  | 13h |
| 103 | 6.2.3.1 | Place auction items and bid sheets on tables |  | 3h | 2021-08-30 15:00 | 2021-08-31 09:00 | 93 | -0.12d | 0d |  | Volunteer Team [400%] | 12h |
| 104 | 6.2.3.2 | Set up auction item tracking at payment table |  | 1h | 2021-08-30 15:00 | 2021-08-30 16:00 | 93 | 0.12d |  |  | Auction Manager | 1h |
| 105 | 6.2.3.3 | Auction setup complete | milestone | 0d | 2021-08-31 09:00 | 2021-08-31 09:00 | 103, 104 | -0.12d | 0d |  |  |  |
| 106 | 6.2.4 | **Wine Tasting Setup** |  | 0.5d | 2021-08-30 13:00 | 2021-08-30 17:00 |  | 0d |  |  |  | 4.5h |
| 107 | 6.2.4.1 | Deliver wine |  | 2h | 2021-08-30 13:00 | 2021-08-30 15:00 |  | 0d |  |  | Wine Vendor | 2h |
| 108 | 6.2.4.2 | Place wine, ice buckets, spit buckets, and water pitchers on tables |  | 2h | 2021-08-30 15:00 | 2021-08-30 17:00 | 107, 93 | 0d |  |  | Wine Vendor | 2h |
| 109 | 6.2.4.3 | Place tasting notes on table |  | 30min | 2021-08-30 13:00 | 2021-08-30 13:30 |  | 0.44d |  |  | Wine Tasting Manager | 0.5h |
| 110 | 6.2.4.4 | Wine tasting setup complete | milestone | 0d | 2021-08-30 17:00 | 2021-08-30 17:00 | 109, 108 | 0d |  |  |  |  |
| 111 | 6.3 | Setup complete | milestone | 0d | 2021-08-31 09:00 | 2021-08-31 09:00 | 91, 106, 102, 97, 101, 105, 110 | -0.12d | 0d |  |  |  |
| 112 | 6.4 | Event starts | milestone | 0d | 2021-08-31 08:00 | 2021-08-31 08:00 | 111 | -0.12d | 0d | must start on 2021-08-31 08:00 |  |  |

Notes:
- 85: Centerpieces can be raffle items.

| ID | WBS | Task | Type | Duration | Start | Finish | Predecessors | Total slack | Constraint | Resources | Work |
| --- | --- | --- | --- | --- | --- | --- | --- | --- | --- | --- | --- |
| 113 | 6.5 | **Event Activities** |  | 0.38d | 2021-08-31 08:00 | 2021-08-31 11:00 | 112 | 0d |  |  | 48h |
| 114 | 6.5.1 | Registration |  | 1.5h | 2021-08-31 08:00 | 2021-08-31 09:30 |  | 0.19d |  | Volunteer Team [300%] | 4.5h |
| 115 | 6.5.2 | Silent auction |  | 0.75h | 2021-08-31 08:00 | 2021-08-31 08:45 |  | 0.28d |  | Auction Manager; Volunteer Team [300%] | 3h |
| 116 | 6.5.3 | Wine tasting |  | 3h | 2021-08-31 08:00 | 2021-08-31 11:00 |  | 0d |  | Wine Tasting Manager; Volunteer Team [800%] | 27h |
| 117 | 6.5.4 | Live auction |  | 0.75h | 2021-08-31 08:00 | 2021-08-31 08:45 |  | 0.28d | start no earlier than 2021-08-31 08:00 | Auction Manager; Auctioneer | 1.5h |
| 118 | 6.5.5 | Serve food |  | 3h | 2021-08-31 08:00 | 2021-08-31 11:00 |  | 0d |  | Volunteer Team [300%] | 9h |
| 119 | 6.5.6 | Music |  | 3h | 2021-08-31 08:00 | 2021-08-31 11:00 |  | 0d |  | Music | 3h |
| 120 | 6.6 | **Cleanup** |  | 0.12d | 2021-08-31 11:00 | 2021-08-31 12:00 | 113 | 0d |  |  | 13h |
| 121 | 6.6.1 | Collect registration and auction materials for post-processing |  | 1h | 2021-08-31 11:00 | 2021-08-31 12:00 |  | 0d |  | Auction Manager; Volunteer Team [300%] | 4h |
| 122 | 6.6.2 | Clear and fold tables |  | 1h | 2021-08-31 11:00 | 2021-08-31 12:00 |  | 0d |  | Volunteer Team [300%] | 3h |
| 123 | 6.6.3 | Pack and remove food supplies |  | 1h | 2021-08-31 11:00 | 2021-08-31 12:00 |  | 0d |  | Caterer | 1h |
| 124 | 6.6.4 | Pack and remove wine tasting supplies |  | 1h | 2021-08-31 11:00 | 2021-08-31 12:00 |  | 0d |  | Wine Tasting Manager; Wine Vendor; Volunteer Team | 3h |
| 125 | 6.6.5 | Pack and remove decorations |  | 1h | 2021-08-31 11:00 | 2021-08-31 12:00 |  | 0d |  | Volunteer Team [200%] | 2h |
| 126 | 6.7 | Event ended | milestone | 0d | 2021-08-31 12:00 | 2021-08-31 12:00 | 120 | 0d |  |  |  |
| 127 | 7 | **Closing** |  | 22.25d | 2021-09-02 13:00 | 2021-10-04 15:00 | 126FS+2d | 0d |  |  | 144h |
| 128 | 7.1 | Obtain deposit refund |  | 0.25d | 2021-09-07 13:00 | 2021-09-07 15:00 | 126FS+5d | 10.75d |  | Chairperson | 2h |
| 129 | 7.2 | Call auction winners about payment and/or pickup |  | 3d | 2021-09-02 13:00 | 2021-09-07 12:00 |  | 1d |  | Auction Manager | 24h |
| 130 | 7.3 | Consolidate wine orders |  | 2d | 2021-09-02 13:00 | 2021-09-06 12:00 |  | 0d |  | Wine Tasting Manager | 16h |
| 131 | 7.4 | Buy wine |  | 1d | 2021-09-06 13:00 | 2021-09-07 12:00 | 130 | 0d |  | Wine Tasting Manager | 8h |
| 132 | 7.5 | Build cases for buyers |  | 1d | 2021-09-07 13:00 | 2021-09-08 12:00 | 131 | 0d |  | Wine Tasting Manager; Volunteer Team [200%] | 24h |
| 133 | 7.6 | Call wine buyers about pickup |  | 3d | 2021-09-08 13:00 | 2021-09-13 12:00 | 132 | 0d |  | Wine Tasting Manager [50%] | 12h |
| 134 | 7.7 | Deliver wine and auction items |  | 2w | 2021-09-08 13:00 | 2021-09-22 12:00 | 133SS, 129 | 0d |  | Wine Tasting Manager [25%]; Volunteer Team [25%] | 40h |
| 135 | 7.8 | Prepare financial accounting for event |  | 3d | 2021-09-22 13:00 | 2021-09-27 12:00 | 134, 128 | 0d |  | Chairperson [25%] | 6h |
| 136 | 7.9 | Hold lessons learned meeting |  | 0.25d | 2021-10-04 13:00 | 2021-10-04 15:00 | 135FS+1w | 0d |  | Auction Manager; Board of Directors; Chairperson; Publicity Manager; Volunteer Team; Wine Tasting Manager | 12h |
| 137 | 8 | Fundraiser complete | milestone | 0d | 2021-10-04 15:00 | 2021-10-04 15:00 | 136 | 0d |  |  |  |
